# Word Tur-01

How a schedule from MS Project changed from version to version. A marks actual dates.

## Version 1 (saved 2016-06-28)

Note of the change: Admin

| ID | WBS | Task | Duration | Start | Finish | Predecessors | Total float | Constraint |
| --- | --- | --- | --- | --- | --- | --- | --- | --- |
| 1 | 1 | **Plan preliminar** | 1.75d | 2016-05-02 09:00 | 2016-05-03 17:00 |  | 0.75d |  |
| 2 |  | Generar WBS del producto inicial | 4h | 2016-05-02 09:00 | 2016-05-02 13:00 |  | 0.75d |  |
| 3 |  | Generar Project Charter | 1h | 2016-05-02 15:00 | 2016-05-02 16:00 | 2 | 0.75d |  |
| 4 |  | Plan preliminar del proyecto | 8h | 2016-05-02 16:00 | 2016-05-03 16:00 | 3 | 0.75d |  |
| 5 |  | Matriz de comunicación | 1h | 2016-05-03 16:00 | 2016-05-03 17:00 | 4 | 0.75d |  |
| 6 |  | Entrega del WBS del producto inicial, Project Charter, Plan preliminar, matriz de comunicación | 0d | 2016-05-03 09:00 | 2016-05-03 09:00 |  | 105d | start no earlier than 2016-05-03 09:00 |
| 7 | 2 | **Nombre de proyecto** | 106d | 2016-05-02 09:00 | 2016-10-14 19:00 |  | 0d |  |
| 8 |  | Formación del equipo | 1h | 2016-05-03 17:00 | 2016-05-03 18:00 | 5 | 0.75d |  |
| 9 | 2.2 | **Construcción** | 106d | 2016-05-02 09:00 | 2016-10-14 19:00 |  | 0d |  |
| 10 | 2.2.1 | **Fase Uno/Iteracion uno** | 106d | 2016-05-02 09:00 | 2016-10-14 19:00 |  | 0d |  |
| 11 | 2.2.1.1 | **Analisis** | 4.69d | 2016-05-03 18:00 | 2016-05-12 15:30 |  | 0.75d |  |
| 12 | 2.2.1.1.1 | **Elicitación** | 3.12d | 2016-05-03 18:00 | 2016-05-09 19:00 |  | 0.75d |  |
| 13 |  | Generar lista de proveedores | 2h | 2016-05-03 18:00 | 2016-05-04 10:00 | 8 | 0.75d |  |
| 14 |  | Evaluar proveedores de requerimientos | 1h | 2016-05-04 10:00 | 2016-05-04 11:00 | 13 | 0.75d |  |
| 15 |  | Definir estrategia de recoleccion de datos | 0.5h | 2016-05-04 11:00 | 2016-05-04 11:30 | 14 | 0.75d |  |
| 16 |  | Planificacion de reuniones de licitacion | 1.5h | 2016-05-04 11:30 | 2016-05-04 13:00 | 15 | 0.75d |  |
| 17 |  | Identificar procesos del sistema | 8h | 2016-05-04 15:00 | 2016-05-06 13:00 | 16 | 0.75d |  |
| 18 |  | Identificar requerimientos funcionales | 8h | 2016-05-06 15:00 | 2016-05-09 13:00 | 17 | 0.75d |  |
| 19 |  | Identificar requerimientos no funcionales | 4h | 2016-05-09 15:00 | 2016-05-09 19:00 | 18 | 0.75d |  |
| 20 | 2.2.1.1.2 | **Especificación** | 2d | 2016-05-10 09:00 | 2016-05-11 19:00 |  |  |  |
| 21 |  | Evaluacion de requerimientos | 2h | 2016-05-11 09:00 | 2016-05-11 11:00 | 19 | 0.75d |  |
| 22 |  | SRS | 6h | 2016-05-11 11:00 | 2016-05-11 19:00 | 21 | 3d | finish no earlier than 2016-05-11 19:00 |
| 23 | 2.2.1.1.3 | **Gestión de requerimientos** | 0.56d | 2016-05-12 09:00 | 2016-05-12 15:30 |  | 3d |  |
| 24 |  | Priorizar los requerimientos | 2h | 2016-05-12 09:00 | 2016-05-12 11:00 | 22 | 3d |  |
| 25 |  | Almacenar en repositorio | 0.5h | 2016-05-12 11:00 | 2016-05-12 11:30 | 24 | 3d |  |
| 26 |  | Asignar a desarrolladores de software | 1h | 2016-05-12 11:30 | 2016-05-12 12:30 | 25 | 3d |  |
| 27 |  | Administración de cambios de requerimientos | 0.5h | 2016-05-12 12:30 | 2016-05-12 13:00 | 26 | 3d |  |
| 28 |  | Administración de la trazabilidad de requerimientos | 0.5h | 2016-05-12 15:00 | 2016-05-12 15:30 | 27 | 3d |  |
| 29 |  | Entrega lista de proveedores de requerimientos, Planificación de reuniones de licitacion, SRS | 0d | 2016-05-12 09:00 | 2016-05-12 09:00 |  | 100d | start no earlier than 2016-05-12 09:00 |
| 30 | 2.2.1.2 | **Planificación** | 8.69d | 2016-05-12 09:00 | 2016-05-25 16:30 |  |  |  |
| 31 |  | Definición del ciclo de vida | 0.5h | 2016-05-12 15:30 | 2016-05-12 16:00 | 28 | 3d |  |
| 32 |  | Definición de politicas | 0.5h | 2016-05-12 16:00 | 2016-05-12 16:30 | 31 | 3d |  |
| 33 |  | Actualizar plan de proyecto | 2h | 2016-05-12 16:30 | 2016-05-12 18:30 | 32 | 3d |  |
| 34 |  | Actualizar matriz de comunicación | 1h | 2016-05-12 18:30 | 2016-05-16 09:30 | 33 | 3d |  |
| 35 | 2.2.1.2.5 | **Estimación** | 0.75d | 2016-05-16 09:30 | 2016-05-16 17:30 |  | 3d |  |
| 36 |  | Actualizar WBS/Calendario | 1h | 2016-05-16 09:30 | 2016-05-16 10:30 | 34 | 3d |  |
| 37 |  | Diccionario del WBS | 4h | 2016-05-16 10:30 | 2016-05-16 16:30 | 36 | 3d |  |
| 38 |  | Costos | 1h | 2016-05-16 16:30 | 2016-05-16 17:30 | 37 | 3d |  |
| 39 | 2.2.1.2.6 | **Riesgos** | 1.5d | 2016-05-16 17:30 | 2016-05-18 11:30 |  | 3d |  |
| 40 |  | Identificación de riesgos | 6h | 2016-05-16 17:30 | 2016-05-17 15:30 | 38 | 3d |  |
| 41 |  | Asignacion de prioridades | 2h | 2016-05-17 15:30 | 2016-05-17 17:30 | 40 | 3d |  |
| 42 |  | Plan de mitigación y contingencia | 4h | 2016-05-17 17:30 | 2016-05-18 11:30 | 41 | 3d |  |
| 43 | 2.2.1.2.7 | **Aseguramiento de la calidad** | 3.69d | 2016-05-18 09:00 | 2016-05-23 16:30 |  |  |  |
| 44 |  | Plan de gestión de la configuración | 2h | 2016-05-18 11:30 | 2016-05-18 15:30 | 42 | 3d |  |
| 45 |  | Junta de arranque de construcción | 1h | 2016-05-18 15:30 | 2016-05-18 16:30 | 44 | 3d |  |
| 46 |  | Entrega del plan del proyecto actualizado,matriz de comunicación, diccionario WBS,Identificacion de riesgos,Plan de mitigación y contingencia, Plan de gestion de la configuración, Junta de arranque de construcción | 0d | 2016-05-18 09:00 | 2016-05-18 09:00 |  | 3.69d |  |
| 47 | 2.2.1.3 | **Diseño** | 12.31d | 2016-05-02 09:00 | 2016-05-23 11:30 |  | 40.69d |  |
| 48 |  | Definición de la arquitectura | 2h | 2016-05-18 16:30 | 2016-05-18 18:30 | 45 | 31d |  |
| 49 |  | Diagrama de caso de uso | 4h | 2016-05-18 18:30 | 2016-05-19 12:30 | 48 | 31d |  |
| 50 |  | Diagrama de secuencia | 2h | 2016-05-19 12:30 | 2016-05-19 16:30 | 49 | 31d |  |
| 51 |  | Diagrama de clases | 1h | 2016-05-19 16:30 | 2016-05-19 17:30 | 50 | 31d |  |
| 52 |  | Diagrama de componentes | 1h | 2016-05-19 17:30 | 2016-05-19 18:30 | 51 | 31d |  |
| 53 |  | Diagrama de despliegue | 2h | 2016-05-19 18:30 | 2016-05-20 10:30 | 52 | 31d |  |
| 54 |  | Mapa de navegación | 1h | 2016-05-20 10:30 | 2016-05-20 11:30 | 53 | 31d |  |
| 55 |  | Maquetación (bocetos) | 6h | 2016-05-20 11:30 | 2016-05-23 09:30 | 54 | 31d |  |
| 56 | 2.2.1.3.9 | **Diseñar los diagramas de la BD** | 12.31d | 2016-05-02 09:00 | 2016-05-23 11:30 |  | 43.06d |  |
| 57 |  | Diagrama E-R | 1h | 2016-05-23 09:30 | 2016-05-23 10:30 | 55 | 31d |  |
| 58 |  | Diagrama Relacional | 1h | 2016-05-23 10:30 | 2016-05-23 11:30 | 57 | 31d |  |
| 59 |  | Definición de la arquitectura, diagramas UML, mapa de navegación y bocetos, Entrega de diagramas de la base de datos | 0d | 2016-05-02 09:00 | 2016-05-02 09:00 |  | 106d |  |
| 60 | 2.2.1.4 | **Codificación** | 15.81d | 2016-05-23 11:30 | 2016-06-14 10:00 |  | 31d |  |
| 61 |  | Codificación de la base de datos | 3h | 2016-05-23 11:30 | 2016-05-23 16:30 | 57, 58 | 31d |  |
| 62 | 2.2.1.4.2 | **Módulo Usuario** | 1.56d | 2016-05-23 16:30 | 2016-05-25 11:00 |  | 31d |  |
| 63 |  | Interfaz | 1h | 2016-05-23 16:30 | 2016-05-23 17:30 | 61 | 31d |  |
| 64 |  | Clases de usuario | 6h | 2016-05-23 17:30 | 2016-05-24 15:30 | 63 | 31d |  |
| 65 |  | Conexión de la base de datos | 0.5h | 2016-05-24 15:30 | 2016-05-24 16:00 | 64 | 31d |  |
| 66 |  | Alta de usuarios | 0.5h | 2016-05-24 16:00 | 2016-05-24 16:30 | 65 | 31d |  |
| 67 |  | Baja de usuarios | 0.5h | 2016-05-24 16:30 | 2016-05-24 17:00 | 66 | 31d |  |
| 68 |  | Actualizacion de usuarios | 1h | 2016-05-24 17:00 | 2016-05-24 18:00 | 67 | 31d |  |
| 69 |  | Consultas de usuarios | 1h | 2016-05-24 18:00 | 2016-05-24 19:00 | 68 | 31d |  |
| 70 |  | Reportes de usuarios | 2h | 2016-05-25 09:00 | 2016-05-25 11:00 | 69 | 31d |  |

| ID | WBS | Task | Duration | Start | Finish | Predecessors | Total float |
| --- | --- | --- | --- | --- | --- | --- | --- |
| 71 | 2.2.1.4.3 | **Módulo viajes** | 2.31d | 2016-05-25 11:00 | 2016-05-27 15:30 |  | 31d |
| 72 |  | Interfaz | 1h | 2016-05-25 11:00 | 2016-05-25 12:00 | 70 | 31d |
| 73 |  | Clases de viajes | 6h | 2016-05-25 12:00 | 2016-05-26 10:00 | 72 | 31d |
| 74 |  | Alta de viajes | 0.5h | 2016-05-26 10:00 | 2016-05-26 10:30 | 73 | 31d |
| 75 |  | Baja de viajes | 0.5d | 2016-05-26 10:30 | 2016-05-26 16:30 | 74 | 31d |
| 76 |  | Actualización de viajes | 0.5d | 2016-05-26 16:30 | 2016-05-27 10:30 | 75 | 31d |
| 77 |  | Consultas de viajes | 1h | 2016-05-27 10:30 | 2016-05-27 11:30 | 76 | 31d |
| 78 |  | Reportes de viajes | 2h | 2016-05-27 11:30 | 2016-05-27 15:30 | 77 | 31d |
| 79 | 2.2.1.4.4 | **Módulo clientes** | 2.31d | 2016-05-27 15:30 | 2016-05-31 18:00 |  | 31d |
| 80 |  | Interfaz | 1h | 2016-05-27 15:30 | 2016-05-27 16:30 | 78 | 31d |
| 81 |  | Clases clientes | 6h | 2016-05-27 16:30 | 2016-05-30 12:30 | 80 | 31d |
| 82 |  | Alta clientes | 0.5h | 2016-05-30 12:30 | 2016-05-30 13:00 | 81 | 31d |
| 83 |  | Baja clientes | 0.5d | 2016-05-30 15:00 | 2016-05-30 19:00 | 82 | 31d |
| 84 |  | Actualización clientes | 0.5d | 2016-05-31 09:00 | 2016-05-31 13:00 | 83 | 31d |
| 85 |  | Consultas clientes | 1h | 2016-05-31 15:00 | 2016-05-31 16:00 | 84 | 31d |
| 86 |  | Reportes de los clientes | 2h | 2016-05-31 16:00 | 2016-05-31 18:00 | 85 | 31d |
| 87 | 2.2.1.4.5 | **Módulo hotel** | 2.31d | 2016-05-31 18:00 | 2016-06-03 10:30 |  | 31d |
| 88 |  | Interfaz | 1h | 2016-05-31 18:00 | 2016-05-31 19:00 | 86 | 31d |
| 89 |  | Clases hotel | 6h | 2016-06-01 09:00 | 2016-06-01 17:00 | 88 | 31d |
| 90 |  | Alta de hotel | 0.5h | 2016-06-01 17:00 | 2016-06-01 17:30 | 89 | 31d |
| 91 |  | Baja de viajes | 0.5d | 2016-06-01 17:30 | 2016-06-02 11:30 | 90 | 31d |
| 92 |  | Actualización hotel | 0.5d | 2016-06-02 11:30 | 2016-06-02 17:30 | 91 | 31d |
| 93 |  | Consultas hotel | 1h | 2016-06-02 17:30 | 2016-06-02 18:30 | 92 | 31d |
| 94 |  | Reportes hotel | 2h | 2016-06-02 18:30 | 2016-06-03 10:30 | 93 | 31d |
| 95 | 2.2.1.4.6 | **Módulo transporte** | 2.31d | 2016-06-03 10:30 | 2016-06-07 13:00 |  | 31d |
| 96 |  | Interfaz | 1h | 2016-06-03 10:30 | 2016-06-03 11:30 | 94 | 31d |
| 97 |  | Clase transporte | 6h | 2016-06-03 11:30 | 2016-06-06 09:30 | 96 | 31d |
| 98 |  | Alta transporte | 0.5h | 2016-06-06 09:30 | 2016-06-06 10:00 | 97 | 31d |
| 99 |  | Baja transporte | 0.5d | 2016-06-06 10:00 | 2016-06-06 16:00 | 98 | 31d |
| 100 |  | Actualización transporte | 0.5d | 2016-06-06 16:00 | 2016-06-07 10:00 | 99 | 31d |
| 101 |  | Consultas transporte | 1h | 2016-06-07 10:00 | 2016-06-07 11:00 | 100 | 31d |
| 102 |  | Reportes transporte | 2h | 2016-06-07 11:00 | 2016-06-07 13:00 | 101 | 31d |
| 103 | 2.2.1.4.7 | **Módulo procedencia-destino** | 2.31d | 2016-06-07 15:00 | 2016-06-09 17:30 |  | 31d |
| 104 |  | Interfaz | 1h | 2016-06-07 15:00 | 2016-06-07 16:00 | 102 | 31d |
| 105 |  | Clases procedencia-destino | 6h | 2016-06-07 16:00 | 2016-06-08 12:00 | 104 | 31d |
| 106 |  | Alta procedencia-destino | 0.5h | 2016-06-08 12:00 | 2016-06-08 12:30 | 105 | 31d |
| 107 |  | Baja procedencia-destino | 0.5d | 2016-06-08 12:30 | 2016-06-08 18:30 | 106 | 31d |
| 108 |  | Actualización procedencia-destino | 0.5d | 2016-06-08 18:30 | 2016-06-09 12:30 | 107 | 31d |
| 109 |  | Consultas procedencia-destino | 1h | 2016-06-09 12:30 | 2016-06-09 15:30 | 108 | 31d |
| 110 |  | Reportes procedencia-destino | 2h | 2016-06-09 15:30 | 2016-06-09 17:30 | 109 | 31d |
| 111 | 2.2.1.4.8 | **Módulo Registro paquetes** | 2.31d | 2016-06-09 17:30 | 2016-06-14 10:00 |  | 31d |
| 112 |  | Interfaz | 1h | 2016-06-09 17:30 | 2016-06-09 18:30 | 110 | 31d |
| 113 |  | Clases Registro paquetes | 6h | 2016-06-09 18:30 | 2016-06-10 16:30 | 112 | 31d |
| 114 |  | Alta Registro paquetes | 0.5h | 2016-06-10 16:30 | 2016-06-10 17:00 | 113 | 31d |
| 115 |  | Baja Registro paquetes | 0.5d | 2016-06-10 17:00 | 2016-06-13 11:00 | 114 | 31d |
| 116 |  | Actualización Registro paquetes | 0.5d | 2016-06-13 11:00 | 2016-06-13 17:00 | 115 | 31d |
| 117 |  | Consultas Registro paquetes | 1h | 2016-06-13 17:00 | 2016-06-13 18:00 | 116 | 31d |
| 118 |  | Reportes Registro paquetes | 2h | 2016-06-13 18:00 | 2016-06-14 10:00 | 117 | 31d |
| 119 | 2.2.1.5 | **Pruebas** | 45d | 2016-06-14 10:00 | 2016-08-31 10:00 |  | 0d |
| 120 | 2.2.1.5.1 | **Pruebas de caja blanca** | 45d | 2016-06-14 10:00 | 2016-08-31 10:00 |  | 0d |
| 121 | 2.2.1.5.1.1 | **Módulo Usuario** | 2d | 2016-06-14 10:00 | 2016-06-16 10:00 |  | 31d |
| 122 |  | Pruebas unitarias | 1d | 2016-06-14 10:00 | 2016-06-15 10:00 | 118 | 31d |
| 123 |  | Pruebas de módulo | 1d | 2016-06-15 10:00 | 2016-06-16 10:00 | 122 | 31d |
| 124 | 2.2.1.5.1.2 | **Módulo viajes** | 2d | 2016-06-16 10:00 | 2016-06-20 10:00 |  | 31d |
| 125 |  | Pruebas unitarias | 1d | 2016-06-16 10:00 | 2016-06-17 10:00 | 123 | 31d |
| 126 |  | Pruebas de módulo | 1d | 2016-06-17 10:00 | 2016-06-20 10:00 | 125 | 31d |
| 127 | 2.2.1.5.1.3 | **Módulo clientes** | 2d | 2016-06-20 10:00 | 2016-06-22 10:00 |  | 31d |
| 128 |  | Pruebas unitarias | 1d | 2016-06-20 10:00 | 2016-06-21 10:00 | 126 | 31d |
| 129 |  | Pruebas de módulo | 1d | 2016-06-21 10:00 | 2016-06-22 10:00 | 128 | 31d |
| 130 | 2.2.1.5.1.4 | **Módulo hotel** | 2d | 2016-06-22 10:00 | 2016-06-24 10:00 |  | 31d |
| 131 |  | Pruebas unitarias | 1d | 2016-06-22 10:00 | 2016-06-23 10:00 | 129 | 31d |
| 132 |  | Pruebas de módulo | 1d | 2016-06-23 10:00 | 2016-06-24 10:00 | 131 | 31d |
| 133 | 2.2.1.5.1.5 | **Módulo transporte** | 2d | 2016-06-24 10:00 | 2016-06-28 10:00 |  | 31d |
| 134 |  | Pruebas unitarias | 1d | 2016-06-24 10:00 | 2016-06-27 10:00 | 132 | 31d |
| 135 |  | Pruebas de módulo | 1d | 2016-06-27 10:00 | 2016-06-28 10:00 | 134 | 31d |
| 136 | 2.2.1.5.1.6 | **Módulo procedencia-destino** | 2d | 2016-06-28 10:00 | 2016-06-30 10:00 |  | 31d |
| 137 |  | Pruebas unitarias | 1d | 2016-06-28 10:00 | 2016-06-29 10:00 | 135 | 31d |
| 138 |  | Pruebas de módulo | 1d | 2016-06-29 10:00 | 2016-06-30 10:00 | 137 | 31d |
| 139 | 2.2.1.5.1.7 | **Módulo Registro paquetes** | 33.12d | 2016-06-30 09:00 | 2016-08-31 10:00 |  |  |
| 140 |  | Pruebas unitarias | 1d | 2016-06-30 10:00 | 2016-07-01 10:00 | 138 | 31d |

| ID | WBS | Task | Duration | Start | Finish | Predecessors | Total float | Constraint |
| --- | --- | --- | --- | --- | --- | --- | --- | --- |
| 141 |  | Pruebas de módulo | 1d | 2016-07-01 10:00 | 2016-07-05 10:00 | 140 | 31d |  |
| 142 |  | Entrega de documentos de Pruebas | 0d | 2016-06-30 09:00 | 2016-06-30 09:00 |  | 33.12d |  |
| 143 | 2.2.1.6 | **Implementación** | 46.12d | 2016-06-30 09:00 | 2016-09-19 10:00 |  |  |  |
| 144 |  | Evaluación de hosting | 1d | 2016-07-05 10:00 | 2016-07-06 10:00 | 141 | 39d |  |
| 145 |  | Implementar el sitio en hosting | 1d | 2016-07-06 10:00 | 2016-07-07 10:00 | 144 | 39d |  |
| 146 |  | Manual de usuario | 1d | 2016-07-07 10:00 | 2016-07-08 10:00 | 145 | 39d |  |
| 147 |  | Entrega de manual de usuario | 0d | 2016-06-30 09:00 | 2016-06-30 09:00 |  | 46.12d |  |
| 148 | 2.2.1.6.5 | **Pruebas de caja blanca** | 2d | 2016-07-08 10:00 | 2016-07-12 10:00 |  | 39d |  |
| 149 |  | Pruebas de rendimiento | 1d | 2016-07-08 10:00 | 2016-07-11 10:00 | 146 | 39d |  |
| 150 |  | Pruebas de sistema | 1d | 2016-07-11 10:00 | 2016-07-12 10:00 | 149 | 39d |  |
| 151 | 2.2.1.7 | **Cierre de proyecto** | 59d | 2016-07-12 09:00 | 2016-10-14 19:00 |  |  |  |
| 152 |  | Carta de cierre de proyecto | 1d | 2016-07-12 10:00 | 2016-07-13 10:00 | 150 | 46.88d |  |
| 153 |  | Acta de cierre de proyecto | 1d | 2016-07-13 10:00 | 2016-07-14 10:00 | 152 | 46.88d |  |
| 154 |  | Evaluacion de desempeño | 2d | 2016-07-14 10:00 | 2016-08-01 10:00 | 153 | 46.88d |  |
| 155 |  | Juntas de lecciones aprendidas | 2d | 2016-08-01 10:00 | 2016-08-03 10:00 | 154 | 46.88d |  |
| 156 |  | Revisión de adherencia de procesos | 2d | 2016-08-03 10:00 | 2016-08-05 10:00 | 155 | 46.88d |  |
| 157 |  | Liberaciones de recursos | 2d | 2016-08-05 10:00 | 2016-08-09 10:00 | 156 | 46.88d |  |
| 158 |  | Informe final (cierre) | 2d | 2016-08-09 10:00 | 2016-08-11 10:00 | 157 | 46.88d |  |
| 159 |  | Carta de cierre de proyecto, Acta de cierre de proyecto, Lecciones aprendidas, Revision de adherencia de procesos y Informe final | 0d | 2016-07-12 19:00 | 2016-07-12 19:00 |  | 58d | finish no earlier than 2016-07-12 19:00 |
| 161 | 2.2.1.7.9 | **Revisión** | 13d | 2016-07-12 09:00 | 2016-08-12 09:00 |  | 46d |  |
| 162 |  | Revisión 1 | 0d | 2016-07-12 09:00 | 2016-07-12 09:00 |  | 59d | start no earlier than 2016-05-06 09:00 |
| 163 |  | Revisión 2 | 0d | 2016-07-12 09:00 | 2016-07-12 09:00 |  | 59d | start no earlier than 2016-05-13 09:00 |
| 164 |  | Revisión 3 | 0d | 2016-07-12 09:00 | 2016-07-12 09:00 |  | 59d | start no earlier than 2016-05-20 09:00 |
| 165 |  | Revisión 4 | 0d | 2016-07-12 09:00 | 2016-07-12 09:00 |  | 59d | start no earlier than 2016-05-27 09:00 |
| 166 |  | Revisión 5 | 0d | 2016-07-12 09:00 | 2016-07-12 09:00 |  | 59d | start no earlier than 2016-06-03 09:00 |
| 167 |  | Revisión 6 | 0d | 2016-07-12 09:00 | 2016-07-12 09:00 |  | 59d | start no earlier than 2016-06-10 09:00 |
| 168 |  | Revisión 7 | 0d | 2016-07-12 09:00 | 2016-07-12 09:00 |  | 59d | start no earlier than 2016-06-17 09:00 |
| 169 |  | Revisión 8 | 0d | 2016-07-12 09:00 | 2016-07-12 09:00 |  | 59d | start no earlier than 2016-06-24 09:00 |
| 170 |  | Revisión 9 | 0d | 2016-07-12 09:00 | 2016-07-12 09:00 |  | 59d | start no earlier than 2016-07-01 09:00 |
| 171 |  | Revisión 10 | 0d | 2016-07-12 09:00 | 2016-07-12 09:00 |  | 59d | start no earlier than 2016-07-08 09:00 |
| 172 |  | Revisión 11 | 0d | 2016-07-15 09:00 | 2016-07-15 09:00 |  | 10d | start no earlier than 2016-07-15 09:00 |
| 173 |  | Revisión 12 | 0d | 2016-07-22 09:00 | 2016-07-22 09:00 |  | 9d | start no earlier than 2016-07-22 09:00 |
| 174 |  | Revisión 13 | 0d | 2016-07-29 09:00 | 2016-07-29 09:00 |  | 9d | start no earlier than 2016-07-29 09:00 |
| 175 |  | Revisión 14 | 0d | 2016-08-05 09:00 | 2016-08-05 09:00 |  | 5d | start no earlier than 2016-08-05 09:00 |
| 176 |  | Revisión 15 | 0d | 2016-08-12 09:00 | 2016-08-12 09:00 |  | 46d | start no earlier than 2016-08-12 09:00 |

## Version 2 (saved 2016-07-02)

Note of the change: Archivos Riesgos Administracion

Last finish 2016-10-14 → 2016-08-10 (-65d). Complete tasks 0 → 104.

Removed: 161 Revisión; 162 Revisión 1; 163 Revisión 2; 164 Revisión 3; 165 Revisión 4; 166 Revisión 5; 167 Revisión 6; 168 Revisión 7; 169 Revisión 8; 170 Revisión 9; 171 Revisión 10; 172 Revisión 11; 173 Revisión 12; 174 Revisión 13; 175 Revisión 14; 176 Revisión 15

Changed:

| ID | Task | Start | Finish | Duration | Complete | Total float | Predecessors | Other |
| --- | --- | --- | --- | --- | --- | --- | --- | --- |
| 1 | **Plan preliminar** | 2016-05-02 09:00 A | 2016-05-03 17:00 → 2016-05-03 16:00 A | 1.75d → 1.62d | 0% → 100% | 0.75d → none |  |  |
| 2 | Generar WBS del producto inicial | 2016-05-02 09:00 A | 2016-05-02 13:00 A |  | 0% → 100% | 0.75d → none |  | resources Líder → Administrador de Proyectos |
| 3 | Generar Project Charter | 2016-05-02 15:00 A | 2016-05-02 16:00 A |  | 0% → 100% | 0.75d → none |  | resources Líder → Administrador de Proyectos |
| 4 | Plan preliminar del proyecto | 2016-05-02 16:00 A | 2016-05-03 16:00 A |  | 0% → 100% | 0.75d → none |  | resources Líder → Administrador de Proyectos |
| 5 | Matriz de comunicación | 2016-05-03 16:00 → 2016-05-03 15:00 A | 2016-05-03 17:00 → 2016-05-03 16:00 A |  | 0% → 100% | 0.75d → none | 4 → 4FS-1h |  |
| 6 | Entrega del WBS del producto inicial, Project Charter, Plan preliminar, matriz de comunicación | 2016-05-03 09:00 A | 2016-05-03 09:00 A |  | 0% → 100% | 105d → none |  |  |
| 7 | **Nombre de proyecto** | 2016-05-02 09:00 → 2016-05-03 16:00 A (+1d) | 2016-10-14 19:00 → 2016-08-10 16:42 (-65d) | 106d → 57.09d | 0% → 74% |  |  |  |
| 8 | Formación del equipo | 2016-05-03 17:00 → 2016-05-03 16:00 A | 2016-05-03 18:00 → 2016-05-03 17:00 A |  | 0% → 100% | 0.75d → none |  | resources Líder → Administrador de Proyectos |
| 9 | **Construcción** | 2016-05-02 09:00 → 2016-05-03 17:00 A (+1d) | 2016-10-14 19:00 → 2016-08-10 16:42 (-65d) | 106d → 56.96d | 0% → 74% |  |  |  |
| 10 | **Fase Uno/Iteracion uno** | 2016-05-02 09:00 → 2016-05-03 17:00 A (+1d) | 2016-10-14 19:00 → 2016-08-10 16:42 (-65d) | 106d → 56.96d | 0% → 74% |  |  |  |
| 11 | **Analisis** | 2016-05-03 18:00 → 2016-05-03 17:00 A | 2016-05-12 15:30 → 2016-05-12 11:48 | 4.69d → 4.6d | 0% → 94% | 0.75d → 52.36d |  |  |
| 12 | **Elicitación** | 2016-05-03 18:00 → 2016-05-03 17:00 A | 2016-05-09 19:00 → 2016-05-09 09:30 A | 3.12d → 2.31d | 0% → 100% | 0.75d → none |  |  |
| 13 | Generar lista de proveedores | 2016-05-03 18:00 → 2016-05-03 17:00 A | 2016-05-04 10:00 → 2016-05-03 19:00 A (-1d) |  | 0% → 100% | 0.75d → none |  |  |
| 14 | Evaluar proveedores de requerimientos | 2016-05-04 10:00 → 2016-05-04 09:00 A | 2016-05-04 11:00 → 2016-05-04 10:00 A |  | 0% → 100% | 0.75d → none |  |  |
| 15 | Definir estrategia de recoleccion de datos | 2016-05-04 11:00 → 2016-05-04 09:30 A | 2016-05-04 11:30 → 2016-05-04 10:00 A |  | 0% → 100% | 0.75d → none | 14 → 14FS-0.5h |  |
| 16 | Planificacion de reuniones de licitacion | 2016-05-04 11:30 → 2016-05-04 10:00 A | 2016-05-04 13:00 → 2016-05-04 11:30 A |  | 0% → 100% | 0.75d → none |  |  |
| 17 | Identificar procesos del sistema | 2016-05-04 15:00 → 2016-05-04 11:30 A | 2016-05-06 13:00 → 2016-05-06 11:30 A |  | 0% → 100% | 0.75d → none |  |  |
| 18 | Identificar requerimientos funcionales | 2016-05-06 15:00 → 2016-05-04 17:30 A (-2d) | 2016-05-09 13:00 → 2016-05-06 17:30 A (-3d) |  | 0% → 100% | 0.75d → none | 17 → 17FS-4h |  |
| 19 | Identificar requerimientos no funcionales | 2016-05-09 15:00 → 2016-05-06 15:30 A (-3d) | 2016-05-09 19:00 → 2016-05-09 09:30 A |  | 0% → 100% | 0.75d → none | 18 → 18FS-2h |  |
| 20 | **Especificación** | 2016-05-10 09:00 → 2016-05-09 09:30 A (-1d) |  | 2d → 1.94d | 0% → 90% | none → 52.61d | none → 12 |  |
| 21 | Evaluacion de requerimientos | 2016-05-11 09:00 → 2016-05-09 09:30 A (-2d) | 2016-05-11 11:00 → 2016-05-09 11:30 A (-2d) |  | 0% → 100% | 0.75d → none | 19 → 19FS-0.5h |  |
| 22 | SRS | 2016-05-11 11:00 A |  |  | 0% → 87% | 3d → 52.61d | 21 → 21FS-2h |  |
| 23 | **Gestión de requerimientos** | 2016-05-12 09:00 A | 2016-05-12 15:30 → 2016-05-12 11:48 | 0.56d → 0.35d | 0% → 70% | 3d → 52.36d | none → 20 |  |
| 24 | Priorizar los requerimientos | 2016-05-12 09:00 A |  |  | 0% → 91% | 3d → 52.46d |  |  |
| 25 | Almacenar en repositorio | 2016-05-12 11:00 → 2016-05-12 10:00 A | 2016-05-12 11:30 → 2016-05-12 10:30 A |  | 0% → 100% | 3d → none | 24 → 24FS-1h |  |
| 26 | Asignar a desarrolladores de software | 2016-05-12 11:30 → 2016-05-12 10:30 A | 2016-05-12 12:30 → 2016-05-12 11:30 |  | 0% → 31% | 3d → 52.4d |  |  |
| 27 | Administración de cambios de requerimientos | 2016-05-12 12:30 → 2016-05-12 11:00 A | 2016-05-12 13:00 → 2016-05-12 11:30 |  | 0% → 50% | 3d → 52.4d | 26 → 26FS-0.5h |  |
| 28 | Administración de la trazabilidad de requerimientos | 2016-05-12 15:00 → 2016-05-12 11:18 A | 2016-05-12 15:30 → 2016-05-12 11:48 |  | 0% → 55% | 3d → 52.36d | 27 → 27FS-0.2h |  |
| 29 | Entrega lista de proveedores de requerimientos, Planificación de reuniones de licitacion, SRS | 2016-05-12 09:00 A | 2016-05-12 09:00 A |  | 0% → 100% | 100d → none |  |  |
| 30 | **Planificación** | 2016-05-12 09:00 → 2016-05-12 11:48 A | 2016-05-25 16:30 → 2016-05-18 11:12 (-7d) | 8.69d → 2.92d | 0% → 95% | none → 49.44d | none → 11FS-4h |  |
| 31 | Definición del ciclo de vida | 2016-05-12 15:30 → 2016-05-12 11:48 A | 2016-05-12 16:00 → 2016-05-12 12:18 A |  | 0% → 100% | 3d → none |  |  |
| 32 | Definición de politicas | 2016-05-12 16:00 → 2016-05-12 12:12 A | 2016-05-12 16:30 → 2016-05-12 12:42 A |  | 0% → 100% | 3d → none | 31 → 31FS-0.1h |  |
| 33 | Actualizar plan de proyecto | 2016-05-12 16:30 → 2016-05-12 12:42 A | 2016-05-12 18:30 → 2016-05-12 16:42 A |  | 0% → 100% | 3d → none |  |  |
| 34 | Actualizar matriz de comunicación | 2016-05-12 18:30 → 2016-05-12 16:12 A | 2016-05-16 09:30 → 2016-05-12 17:12 A (-4d) |  | 0% → 100% | 3d → none | 33 → 33FS-0.5h |  |
| 35 | **Estimación** | 2016-05-16 09:30 → 2016-05-12 17:12 A (-4d) | 2016-05-16 17:30 → 2016-05-16 12:12 A | 0.75d → 0.62d | 0% → 100% | 3d → none |  |  |
| 36 | Actualizar WBS/Calendario | 2016-05-16 09:30 → 2016-05-12 17:12 A (-4d) | 2016-05-16 10:30 → 2016-05-12 18:12 A (-4d) |  | 0% → 100% | 3d → none |  |  |
| 37 | Diccionario del WBS | 2016-05-16 10:30 → 2016-05-12 18:12 A (-4d) | 2016-05-16 16:30 → 2016-05-16 12:12 A |  | 0% → 100% | 3d → none |  |  |
| 38 | Costos | 2016-05-16 16:30 → 2016-05-16 10:12 A | 2016-05-16 17:30 → 2016-05-16 11:12 A |  | 0% → 100% | 3d → none | 37 → 37FS-2h |  |
| 39 | **Riesgos** | 2016-05-16 17:30 → 2016-05-16 12:12 A | 2016-05-18 11:30 → 2016-05-17 18:12 (-1d) |  | 0% → 94% | 3d → 49.81d | none → 35 |  |
| 40 | Identificación de riesgos | 2016-05-16 17:30 → 2016-05-16 12:12 A | 2016-05-17 15:30 → 2016-05-17 10:12 A |  | 0% → 100% | 3d → none |  | resources Líder; Analista → Analista |
| 41 | Asignacion de prioridades | 2016-05-17 15:30 → 2016-05-17 10:12 A | 2016-05-17 17:30 → 2016-05-17 12:12 A |  | 0% → 100% | 3d → none |  | resources Analista; Líder → Analista |
| 42 | Plan de mitigación y contingencia | 2016-05-17 17:30 → 2016-05-17 12:12 A | 2016-05-18 11:30 → 2016-05-17 18:12 (-1d) |  | 0% → 81% | 3d → 49.81d |  | resources Líder; Analista → Analista |
| 43 | **Aseguramiento de la calidad** | 2016-05-18 09:00 → 2016-05-17 16:12 A (-1d) | 2016-05-23 16:30 → 2016-05-18 11:12 (-5d) | 3.69d → 0.62d | 0% → 85% | none → 49.44d | none → 39FS-2h |  |
| 44 | Plan de gestión de la configuración | 2016-05-18 11:30 → 2016-05-17 18:12 A (-1d) | 2016-05-18 15:30 → 2016-05-18 10:12 A |  | 0% → 100% | 3d → none |  |  |
| 45 | Junta de arranque de construcción | 2016-05-18 15:30 → 2016-05-18 10:12 A | 2016-05-18 16:30 → 2016-05-18 11:12 |  | 0% → 55% | 3d → 49.44d |  |  |
| 46 | Entrega del plan del proyecto actualizado,matriz de comunicación, diccionario WBS,Identificacion de riesgos,Plan de mitigación y contingencia, Plan de gestion de la configuración, Junta de arranque de construcción | 2016-05-18 09:00 → 2016-05-17 16:12 A (-1d) | 2016-05-18 09:00 → 2016-05-17 16:12 A (-1d) |  | 0% → 100% | 3.69d → none |  |  |
| 47 | **Diseño** | 2016-05-02 09:00 → 2016-05-18 09:12 A (+16d) | 2016-05-23 11:30 → 2016-05-20 18:12 A (-3d) | 12.31d → 2.88d | 0% → 100% | 40.69d → none | none → 30FS-2h |  |
| 48 | Definición de la arquitectura | 2016-05-18 16:30 → 2016-05-18 11:12 A | 2016-05-18 18:30 → 2016-05-18 15:12 A |  | 0% → 100% | 31d → none |  |  |
| 49 | Diagrama de caso de uso | 2016-05-18 18:30 → 2016-05-18 15:12 A | 2016-05-19 12:30 → 2016-05-19 09:12 A |  | 0% → 100% | 31d → none |  |  |
| 50 | Diagrama de secuencia | 2016-05-19 12:30 → 2016-05-19 09:12 A | 2016-05-19 16:30 → 2016-05-19 11:12 A |  | 0% → 100% | 31d → none |  |  |
| 51 | Diagrama de clases | 2016-05-19 16:30 → 2016-05-19 11:12 A | 2016-05-19 17:30 → 2016-05-19 12:12 A |  | 0% → 100% | 31d → none |  |  |
| 52 | Diagrama de componentes | 2016-05-19 17:30 → 2016-05-19 12:12 A | 2016-05-19 18:30 → 2016-05-19 15:12 A |  | 0% → 100% | 31d → none |  |  |
| 53 | Diagrama de despliegue | 2016-05-19 18:30 → 2016-05-19 15:12 A | 2016-05-20 10:30 → 2016-05-19 17:12 A (-1d) |  | 0% → 100% | 31d → none |  |  |
| 54 | Mapa de navegación | 2016-05-20 10:30 → 2016-05-19 17:12 A (-1d) | 2016-05-20 11:30 → 2016-05-19 18:12 A (-1d) |  | 0% → 100% | 31d → none |  |  |
| 55 | Maquetación (bocetos) | 2016-05-20 11:30 → 2016-05-19 18:12 A (-1d) | 2016-05-23 09:30 → 2016-05-20 16:12 A (-3d) |  | 0% → 100% | 31d → none |  |  |
| 56 | **Diseñar los diagramas de la BD** | 2016-05-02 09:00 → 2016-05-18 09:12 A (+16d) | 2016-05-23 11:30 → 2016-05-20 18:12 A (-3d) | 12.31d → 2.88d | 0% → 100% | 43.06d → none |  |  |
| 57 | Diagrama E-R | 2016-05-23 09:30 → 2016-05-20 16:12 A (-3d) | 2016-05-23 10:30 → 2016-05-20 17:12 A (-3d) |  | 0% → 100% | 31d → none |  |  |
| 58 | Diagrama Relacional | 2016-05-23 10:30 → 2016-05-20 17:12 A (-3d) | 2016-05-23 11:30 → 2016-05-20 18:12 A (-3d) |  | 0% → 100% | 31d → none |  |  |
| 59 | Definición de la arquitectura, diagramas UML, mapa de navegación y bocetos, Entrega de diagramas de la base de datos | 2016-05-02 09:00 → 2016-05-18 09:12 A (+16d) | 2016-05-02 09:00 → 2016-05-18 09:12 A (+16d) |  | 0% → 100% | 106d → none |  |  |
| 60 | **Codificación** | 2016-05-23 11:30 → 2016-05-20 18:12 A (-3d) | 2016-06-14 10:00 → 2016-06-13 16:42 (-1d) |  | 0% → 95% | 31d → 17.2d | none → 47 |  |
| 61 | Codificación de la base de datos | 2016-05-23 11:30 → 2016-05-20 18:12 A (-3d) | 2016-05-23 16:30 → 2016-05-23 11:12 A |  | 0% → 100% | 31d → none |  |  |
| 62 | **Módulo Usuario** | 2016-05-23 16:30 → 2016-05-23 11:12 A | 2016-05-25 11:00 → 2016-05-24 17:42 A (-1d) |  | 0% → 100% | 31d → none |  |  |
| 63 | Interfaz | 2016-05-23 16:30 → 2016-05-23 11:12 A | 2016-05-23 17:30 → 2016-05-23 12:12 A |  | 0% → 100% | 31d → none |  |  |
| 64 | Clases de usuario | 2016-05-23 17:30 → 2016-05-23 12:12 A | 2016-05-24 15:30 → 2016-05-24 10:12 A |  | 0% → 100% | 31d → none |  |  |
| 65 | Conexión de la base de datos | 2016-05-24 15:30 → 2016-05-24 10:12 A | 2016-05-24 16:00 → 2016-05-24 10:42 A |  | 0% → 100% | 31d → none |  |  |
| 66 | Alta de usuarios | 2016-05-24 16:00 → 2016-05-24 10:42 A | 2016-05-24 16:30 → 2016-05-24 11:12 A |  | 0% → 100% | 31d → none |  |  |
| 67 | Baja de usuarios | 2016-05-24 16:30 → 2016-05-24 11:12 A | 2016-05-24 17:00 → 2016-05-24 11:42 A |  | 0% → 100% | 31d → none |  |  |
| 68 | Actualizacion de usuarios | 2016-05-24 17:00 → 2016-05-24 11:42 A | 2016-05-24 18:00 → 2016-05-24 12:42 A |  | 0% → 100% | 31d → none |  |  |
| 69 | Consultas de usuarios | 2016-05-24 18:00 → 2016-05-24 12:42 A | 2016-05-24 19:00 → 2016-05-24 15:42 A |  | 0% → 100% | 31d → none |  |  |
| 70 | Reportes de usuarios | 2016-05-25 09:00 → 2016-05-24 15:42 A (-1d) | 2016-05-25 11:00 → 2016-05-24 17:42 A (-1d) |  | 0% → 100% | 31d → none |  |  |

| ID | Task | Start | Finish | Duration | Complete | Total float | Predecessors |
| --- | --- | --- | --- | --- | --- | --- | --- |
| 71 | **Módulo viajes** | 2016-05-25 11:00 → 2016-05-24 17:42 A (-1d) | 2016-05-27 15:30 → 2016-05-27 10:12 A |  | 0% → 100% | 31d → none | none → 62 |
| 72 | Interfaz | 2016-05-25 11:00 → 2016-05-24 17:42 A (-1d) | 2016-05-25 12:00 → 2016-05-24 18:42 A (-1d) |  | 0% → 100% | 31d → none |  |
| 73 | Clases de viajes | 2016-05-25 12:00 → 2016-05-24 18:42 A (-1d) | 2016-05-26 10:00 → 2016-05-25 16:42 A (-1d) |  | 0% → 100% | 31d → none |  |
| 74 | Alta de viajes | 2016-05-26 10:00 → 2016-05-25 16:42 A (-1d) | 2016-05-26 10:30 → 2016-05-25 17:12 A (-1d) |  | 0% → 100% | 31d → none |  |
| 75 | Baja de viajes | 2016-05-26 10:30 → 2016-05-25 17:12 A (-1d) | 2016-05-26 16:30 → 2016-05-26 11:12 A |  | 0% → 100% | 31d → none |  |
| 76 | Actualización de viajes | 2016-05-26 16:30 → 2016-05-26 11:12 A | 2016-05-27 10:30 → 2016-05-26 17:12 A (-1d) |  | 0% → 100% | 31d → none |  |
| 77 | Consultas de viajes | 2016-05-27 10:30 → 2016-05-26 17:12 A (-1d) | 2016-05-27 11:30 → 2016-05-26 18:12 A (-1d) |  | 0% → 100% | 31d → none |  |
| 78 | Reportes de viajes | 2016-05-27 11:30 → 2016-05-26 18:12 A (-1d) | 2016-05-27 15:30 → 2016-05-27 10:12 A |  | 0% → 100% | 31d → none |  |
| 79 | **Módulo clientes** | 2016-05-27 15:30 → 2016-05-27 10:12 A | 2016-05-31 18:00 → 2016-05-31 12:42 A |  | 0% → 100% | 31d → none | none → 71 |
| 80 | Interfaz | 2016-05-27 15:30 → 2016-05-27 10:12 A | 2016-05-27 16:30 → 2016-05-27 11:12 A |  | 0% → 100% | 31d → none |  |
| 81 | Clases clientes | 2016-05-27 16:30 → 2016-05-27 11:12 A | 2016-05-30 12:30 → 2016-05-30 09:12 A |  | 0% → 100% | 31d → none |  |
| 82 | Alta clientes | 2016-05-30 12:30 → 2016-05-30 09:12 A | 2016-05-30 13:00 → 2016-05-30 09:42 A |  | 0% → 100% | 31d → none |  |
| 83 | Baja clientes | 2016-05-30 15:00 → 2016-05-30 09:42 A | 2016-05-30 19:00 → 2016-05-30 15:42 A |  | 0% → 100% | 31d → none |  |
| 84 | Actualización clientes | 2016-05-31 09:00 → 2016-05-30 15:42 A (-1d) | 2016-05-31 13:00 → 2016-05-31 09:42 A |  | 0% → 100% | 31d → none |  |
| 85 | Consultas clientes | 2016-05-31 15:00 → 2016-05-31 09:42 A | 2016-05-31 16:00 → 2016-05-31 10:42 A |  | 0% → 100% | 31d → none |  |
| 86 | Reportes de los clientes | 2016-05-31 16:00 → 2016-05-31 10:42 A | 2016-05-31 18:00 → 2016-05-31 12:42 A |  | 0% → 100% | 31d → none |  |
| 87 | **Módulo hotel** | 2016-05-31 18:00 → 2016-05-31 12:42 A | 2016-06-03 10:30 → 2016-06-02 17:12 A (-1d) |  | 0% → 100% | 31d → none | none → 79 |
| 88 | Interfaz | 2016-05-31 18:00 → 2016-05-31 12:42 A | 2016-05-31 19:00 → 2016-05-31 15:42 A |  | 0% → 100% | 31d → none |  |
| 89 | Clases hotel | 2016-06-01 09:00 → 2016-05-31 15:42 A (-1d) | 2016-06-01 17:00 → 2016-06-01 11:42 A |  | 0% → 100% | 31d → none |  |
| 90 | Alta de hotel | 2016-06-01 17:00 → 2016-06-01 11:42 A | 2016-06-01 17:30 → 2016-06-01 12:12 A |  | 0% → 100% | 31d → none |  |
| 91 | Baja de viajes | 2016-06-01 17:30 → 2016-06-01 12:12 A | 2016-06-02 11:30 → 2016-06-01 18:12 A (-1d) |  | 0% → 100% | 31d → none |  |
| 92 | Actualización hotel | 2016-06-02 11:30 → 2016-06-01 18:12 A (-1d) | 2016-06-02 17:30 → 2016-06-02 12:12 A |  | 0% → 100% | 31d → none |  |
| 93 | Consultas hotel | 2016-06-02 17:30 → 2016-06-02 12:12 A | 2016-06-02 18:30 → 2016-06-02 15:12 A |  | 0% → 100% | 31d → none |  |
| 94 | Reportes hotel | 2016-06-02 18:30 → 2016-06-02 15:12 A | 2016-06-03 10:30 → 2016-06-02 17:12 A (-1d) |  | 0% → 100% | 31d → none |  |
| 95 | **Módulo transporte** | 2016-06-03 10:30 → 2016-06-02 17:12 A (-1d) | 2016-06-07 13:00 → 2016-06-07 09:42 A |  | 0% → 100% | 31d → none | none → 87 |
| 96 | Interfaz | 2016-06-03 10:30 → 2016-06-02 17:12 A (-1d) | 2016-06-03 11:30 → 2016-06-02 18:12 A (-1d) |  | 0% → 100% | 31d → none |  |
| 97 | Clase transporte | 2016-06-03 11:30 → 2016-06-02 18:12 A (-1d) | 2016-06-06 09:30 → 2016-06-03 16:12 A (-3d) |  | 0% → 100% | 31d → none |  |
| 98 | Alta transporte | 2016-06-06 09:30 → 2016-06-03 16:12 A (-3d) | 2016-06-06 10:00 → 2016-06-03 16:42 A (-3d) |  | 0% → 100% | 31d → none |  |
| 99 | Baja transporte | 2016-06-06 10:00 → 2016-06-03 16:42 A (-3d) | 2016-06-06 16:00 → 2016-06-06 10:42 A |  | 0% → 100% | 31d → none |  |
| 100 | Actualización transporte | 2016-06-06 16:00 → 2016-06-06 10:42 A | 2016-06-07 10:00 → 2016-06-06 16:42 A (-1d) |  | 0% → 100% | 31d → none |  |
| 101 | Consultas transporte | 2016-06-07 10:00 → 2016-06-06 16:42 A (-1d) | 2016-06-07 11:00 → 2016-06-06 17:42 A (-1d) |  | 0% → 100% | 31d → none |  |
| 102 | Reportes transporte | 2016-06-07 11:00 → 2016-06-06 17:42 A (-1d) | 2016-06-07 13:00 → 2016-06-07 09:42 A |  | 0% → 100% | 31d → none |  |
| 103 | **Módulo procedencia-destino** | 2016-06-07 15:00 → 2016-06-07 09:42 A | 2016-06-09 17:30 → 2016-06-09 12:12 A |  | 0% → 100% | 31d → none | none → 95 |
| 104 | Interfaz | 2016-06-07 15:00 → 2016-06-07 09:42 A | 2016-06-07 16:00 → 2016-06-07 10:42 A |  | 0% → 100% | 31d → none |  |
| 105 | Clases procedencia-destino | 2016-06-07 16:00 → 2016-06-07 10:42 A | 2016-06-08 12:00 → 2016-06-07 18:42 A (-1d) |  | 0% → 100% | 31d → none |  |
| 106 | Alta procedencia-destino | 2016-06-08 12:00 → 2016-06-07 18:42 A (-1d) | 2016-06-08 12:30 → 2016-06-08 09:12 A |  | 0% → 100% | 31d → none |  |
| 107 | Baja procedencia-destino | 2016-06-08 12:30 → 2016-06-08 09:12 A | 2016-06-08 18:30 → 2016-06-08 15:12 A |  | 0% → 100% | 31d → none |  |
| 108 | Actualización procedencia-destino | 2016-06-08 18:30 → 2016-06-08 15:12 A | 2016-06-09 12:30 → 2016-06-09 09:12 A |  | 0% → 100% | 31d → none |  |
| 109 | Consultas procedencia-destino | 2016-06-09 12:30 → 2016-06-09 09:12 A | 2016-06-09 15:30 → 2016-06-09 10:12 A |  | 0% → 100% | 31d → none |  |
| 110 | Reportes procedencia-destino | 2016-06-09 15:30 → 2016-06-09 10:12 A | 2016-06-09 17:30 → 2016-06-09 12:12 A |  | 0% → 100% | 31d → none |  |
| 111 | **Módulo Registro paquetes** | 2016-06-09 17:30 → 2016-06-09 12:12 A | 2016-06-14 10:00 → 2016-06-13 16:42 (-1d) |  | 0% → 66% | 31d → 17.2d | none → 103 |
| 112 | Interfaz | 2016-06-09 17:30 → 2016-06-09 12:12 A | 2016-06-09 18:30 → 2016-06-09 15:12 A |  | 0% → 100% | 31d → none |  |
| 113 | Clases Registro paquetes | 2016-06-09 18:30 → 2016-06-09 15:12 A | 2016-06-10 16:30 → 2016-06-10 11:12 A |  | 0% → 100% | 31d → none |  |
| 114 | Alta Registro paquetes | 2016-06-10 16:30 → 2016-06-10 11:12 A | 2016-06-10 17:00 → 2016-06-10 11:42 A |  | 0% → 100% | 31d → none |  |
| 115 | Baja Registro paquetes | 2016-06-10 17:00 → 2016-06-10 11:42 A | 2016-06-13 11:00 → 2016-06-10 17:42 A (-3d) |  | 0% → 100% | 31d → none |  |
| 116 | Actualización Registro paquetes | 2016-06-13 11:00 → 2016-06-10 17:42 A (-3d) | 2016-06-13 17:00 → 2016-06-13 11:42 |  | 0% → 17% | 31d → 17.2d |  |
| 117 | Consultas Registro paquetes | 2016-06-13 17:00 → 2016-06-13 11:42 | 2016-06-13 18:00 → 2016-06-13 12:42 |  |  | 31d → 17.2d |  |
| 118 | Reportes Registro paquetes | 2016-06-13 18:00 → 2016-06-13 12:42 | 2016-06-14 10:00 → 2016-06-13 16:42 (-1d) |  |  | 31d → 17.2d |  |
| 119 | **Pruebas** | 2016-06-14 10:00 → 2016-06-13 16:42 A (-1d) | 2016-08-31 10:00 → 2016-07-01 16:42 (-61d) | 45d → 14d | 0% → 95% | 0d → 3.9d | none → 60, 111 |
| 120 | **Pruebas de caja blanca** | 2016-06-14 10:00 → 2016-06-13 16:42 A (-1d) | 2016-08-31 10:00 → 2016-07-01 16:42 (-61d) | 45d → 14d | 0% → 95% | 0d → 3.9d |  |
| 121 | **Módulo Usuario** | 2016-06-14 10:00 → 2016-06-13 16:42 A (-1d) | 2016-06-16 10:00 → 2016-06-15 16:42 A (-1d) |  | 0% → 100% | 31d → none |  |
| 122 | Pruebas unitarias | 2016-06-14 10:00 → 2016-06-13 16:42 A (-1d) | 2016-06-15 10:00 → 2016-06-14 16:42 A (-1d) |  | 0% → 100% | 31d → none |  |
| 123 | Pruebas de módulo | 2016-06-15 10:00 → 2016-06-14 16:42 A (-1d) | 2016-06-16 10:00 → 2016-06-15 16:42 A (-1d) |  | 0% → 100% | 31d → none |  |
| 124 | **Módulo viajes** | 2016-06-16 10:00 → 2016-06-15 16:42 A (-1d) | 2016-06-20 10:00 → 2016-06-17 16:42 A (-3d) |  | 0% → 100% | 31d → none | none → 121 |
| 125 | Pruebas unitarias | 2016-06-16 10:00 → 2016-06-15 16:42 A (-1d) | 2016-06-17 10:00 → 2016-06-16 16:42 A (-1d) |  | 0% → 100% | 31d → none |  |
| 126 | Pruebas de módulo | 2016-06-17 10:00 → 2016-06-16 16:42 A (-1d) | 2016-06-20 10:00 → 2016-06-17 16:42 A (-3d) |  | 0% → 100% | 31d → none |  |
| 127 | **Módulo clientes** | 2016-06-20 10:00 → 2016-06-17 16:42 A (-3d) | 2016-06-22 10:00 → 2016-06-21 16:42 A (-1d) |  | 0% → 100% | 31d → none | none → 124 |
| 128 | Pruebas unitarias | 2016-06-20 10:00 → 2016-06-17 16:42 A (-3d) | 2016-06-21 10:00 → 2016-06-20 16:42 A (-1d) |  | 0% → 100% | 31d → none |  |
| 129 | Pruebas de módulo | 2016-06-21 10:00 → 2016-06-20 16:42 A (-1d) | 2016-06-22 10:00 → 2016-06-21 16:42 A (-1d) |  | 0% → 100% | 31d → none |  |
| 130 | **Módulo hotel** | 2016-06-22 10:00 → 2016-06-21 16:42 A (-1d) | 2016-06-24 10:00 → 2016-06-23 16:42 A (-1d) |  | 0% → 100% | 31d → none | none → 127 |
| 131 | Pruebas unitarias | 2016-06-22 10:00 → 2016-06-21 16:42 A (-1d) | 2016-06-23 10:00 → 2016-06-22 16:42 A (-1d) |  | 0% → 100% | 31d → none |  |
| 132 | Pruebas de módulo | 2016-06-23 10:00 → 2016-06-22 16:42 A (-1d) | 2016-06-24 10:00 → 2016-06-23 16:42 A (-1d) |  | 0% → 100% | 31d → none |  |
| 133 | **Módulo transporte** | 2016-06-24 10:00 → 2016-06-23 16:42 A (-1d) | 2016-06-28 10:00 → 2016-06-27 16:42 A (-1d) |  | 0% → 100% | 31d → none | none → 130 |
| 134 | Pruebas unitarias | 2016-06-24 10:00 → 2016-06-23 16:42 A (-1d) | 2016-06-27 10:00 → 2016-06-24 16:42 A (-3d) |  | 0% → 100% | 31d → none |  |
| 135 | Pruebas de módulo | 2016-06-27 10:00 → 2016-06-24 16:42 A (-3d) | 2016-06-28 10:00 → 2016-06-27 16:42 A (-1d) |  | 0% → 100% | 31d → none |  |
| 136 | **Módulo procedencia-destino** | 2016-06-28 10:00 → 2016-06-27 16:42 A (-1d) | 2016-06-30 10:00 → 2016-06-29 16:42 A (-1d) |  | 0% → 100% | 31d → none | none → 133 |
| 137 | Pruebas unitarias | 2016-06-28 10:00 → 2016-06-27 16:42 A (-1d) | 2016-06-29 10:00 → 2016-06-28 16:42 A (-1d) |  | 0% → 100% | 31d → none |  |
| 138 | Pruebas de módulo | 2016-06-29 10:00 → 2016-06-28 16:42 A (-1d) | 2016-06-30 10:00 → 2016-06-29 16:42 A (-1d) |  | 0% → 100% | 31d → none |  |
| 139 | **Módulo Registro paquetes** | 2016-06-30 09:00 → 2016-06-29 16:42 A (-1d) | 2016-08-31 10:00 → 2016-07-01 16:42 (-61d) | 33.12d → 2d | 0% → 65% | none → 3.9d | none → 136 |
| 140 | Pruebas unitarias | 2016-06-30 10:00 → 2016-06-29 16:42 A (-1d) | 2016-07-01 10:00 → 2016-06-30 16:42 A (-1d) |  | 0% → 100% | 31d → none |  |

| ID | Task | Start | Finish | Duration | Complete | Total float | Predecessors | Other |
| --- | --- | --- | --- | --- | --- | --- | --- | --- |
| 141 | Pruebas de módulo | 2016-07-01 10:00 → 2016-06-30 16:42 A (-1d) | 2016-07-05 10:00 → 2016-07-01 16:42 (-4d) |  | 0% → 30% | 31d → 3.9d |  |  |
| 142 | Entrega de documentos de Pruebas | 2016-06-30 09:00 → 2016-06-29 16:42 A (-1d) | 2016-06-30 09:00 → 2016-06-29 16:42 A (-1d) |  | 0% → 100% | 33.12d → none |  |  |
| 143 | **Implementación** | 2016-06-30 09:00 → 2016-07-01 16:42 A (+1d) | 2016-09-19 10:00 → 2016-07-11 16:42 (-70d) | 46.12d → 5d | 0% → 78% | none → 0d | none → 119 |  |
| 144 | Evaluación de hosting | 2016-07-05 10:00 → 2016-07-01 16:42 A (-4d) | 2016-07-06 10:00 → 2016-07-05 16:42 A (-1d) |  | 0% → 100% | 39d → none |  |  |
| 145 | Implementar el sitio en hosting | 2016-07-06 10:00 → 2016-07-05 16:42 A (-1d) | 2016-07-07 10:00 → 2016-07-06 16:42 A (-1d) |  | 0% → 100% | 39d → none |  |  |
| 146 | Manual de usuario | 2016-07-07 10:00 → 2016-07-06 16:42 A (-1d) | 2016-07-08 10:00 → 2016-07-07 16:42 A (-1d) |  | 0% → 100% | 39d → none |  |  |
| 147 | Entrega de manual de usuario | 2016-06-30 09:00 → 2016-07-01 16:42 A (+1d) | 2016-06-30 09:00 → 2016-07-01 16:42 A (+1d) |  | 0% → 100% | 46.12d → none |  |  |
| 148 | **Pruebas de caja blanca** | 2016-07-08 10:00 → 2016-07-07 16:42 A (-1d) | 2016-07-12 10:00 → 2016-07-11 16:42 (-1d) |  | 0% → 45% | 39d → 0d |  |  |
| 149 | Pruebas de rendimiento | 2016-07-08 10:00 → 2016-07-07 16:42 A (-1d) | 2016-07-11 10:00 → 2016-07-08 16:42 (-3d) |  | 0% → 90% | 39d → 0d |  | resources Asegurador de la Calidad; Líder; Tester → Asegurador de la Calidad; Tester |
| 150 | Pruebas de sistema | 2016-07-11 10:00 → 2016-07-08 16:42 (-3d) | 2016-07-12 10:00 → 2016-07-11 16:42 (-1d) |  |  | 39d → 0d |  | resources Asegurador de la Calidad; Líder; Tester → Asegurador de la Calidad; Tester |
| 151 | **Cierre de proyecto** | 2016-07-12 09:00 → 2016-07-11 16:42 (-1d) | 2016-10-14 19:00 → 2016-08-10 16:42 (-65d) | 59d → 12d |  | none → 0d | none → 143 |  |
| 152 | Carta de cierre de proyecto | 2016-07-12 10:00 → 2016-07-11 16:42 (-1d) | 2016-07-13 10:00 → 2016-07-12 16:42 (-1d) |  |  | 46.88d → 0d |  | resources Administrador de Proyectos; Líder → Administrador de Proyectos |
| 153 | Acta de cierre de proyecto | 2016-07-13 10:00 → 2016-07-12 16:42 (-1d) | 2016-07-14 10:00 → 2016-07-13 16:42 (-1d) |  |  | 46.88d → 0d |  | resources Administrador de Proyectos; Líder → Administrador de Proyectos |
| 154 | Evaluacion de desempeño | 2016-07-14 10:00 → 2016-07-13 16:42 (-1d) | 2016-08-01 10:00 → 2016-07-15 16:42 (-17d) |  |  | 46.88d → 0d |  | resources Administrador de la Configuración; Administrador de Proyectos; Asegurador de la Calidad; Líder → Administrador de la Configuración; Administrador de Proyectos; Asegurador de la Calidad |
| 155 | Juntas de lecciones aprendidas | 2016-08-01 10:00 → 2016-07-15 16:42 (-17d) | 2016-08-03 10:00 → 2016-08-02 16:42 (-1d) |  |  | 46.88d → 0d |  | resources Administrador de Proyectos; Líder → Administrador de Proyectos |
| 156 | Revisión de adherencia de procesos | 2016-08-03 10:00 → 2016-08-02 16:42 (-1d) | 2016-08-05 10:00 → 2016-08-04 16:42 (-1d) |  |  | 46.88d → 0d |  | resources Administrador de la Configuración; Administrador de Proyectos; Asegurador de la Calidad; Líder → Administrador de la Configuración; Administrador de Proyectos; Asegurador de la Calidad |
| 157 | Liberaciones de recursos | 2016-08-05 10:00 → 2016-08-04 16:42 (-1d) | 2016-08-09 10:00 → 2016-08-08 16:42 (-1d) |  |  | 46.88d → 0d |  | resources Administrador de Proyectos; Líder → Administrador de Proyectos |
| 158 | Informe final (cierre) | 2016-08-09 10:00 → 2016-08-08 16:42 (-1d) | 2016-08-11 10:00 → 2016-08-10 16:42 (-1d) |  |  | 46.88d → 0d |  | resources Administrador de Proyectos; Líder → Administrador de Proyectos |
